# caNanoLab 1.5.2 Plan

How a schedule from MS Project changed from version to version. A marks actual dates.

## Version 1 (saved 2010-06-07, file caNanoLab_1.5.2_Plan.mpp)

Note of the change: SVN-Revision: 18493

| ID | WBS | Task | Duration | Start | Finish | Predecessors | Complete | Total float | Constraint |
| --- | --- | --- | --- | --- | --- | --- | --- | --- | --- |
| 1 | 1 | **caNanoLab 1.5.2** | 83.12d | 2010-06-01 A | 2010-09-24 |  | 8% | 0d |  |
| 2 | 1.1 | **Inception** | 19d | 2010-06-01 A | 2010-06-25 |  | 45% | 64.62d |  |
| 3 | 1.1.1 | **Project Mangement** | 8d | 2010-06-01 A | 2010-06-10 |  | 53% | 75.62d |  |
| 4 |  | Determine Initial Scope | 1d | 2010-06-01 A | 2010-06-01 |  | 90% | 1.8d |  |
| 5 |  | Draft Initial Project Plan | 2d | 2010-06-02 A | 2010-06-03 | 4 | 90% | 2.5d |  |
| 6 |  | Review/Update Project Plan | 2d | 2010-06-04 | 2010-06-07 | 5 |  | 80.12d |  |
| 7 |  | Deliverable: Baselined Project Plan | 1d | 2010-06-08 | 2010-06-08 | 6 |  | 80.12d |  |
| 8 | 1.1.1.5 | **Report Project Status** | 1d | 2010-06-10 A | 2010-06-10 A |  | 100% |  |  |
| 9 |  | Draft Monthly Status Report | 1d | 2010-06-10 A | 2010-06-10 A |  | 100% |  | start no earlier than 2010-06-10 |
| 10 | 1.1.2 | **Requirements** | 8d | 2010-06-04 A | 2010-06-15 |  | 19% | 72.62d |  |
| 11 |  | Research Group Accounts on CBIIT Projects | 2d | 2010-06-04 | 2010-06-07 | 5 |  | 2.5d |  |
| 12 |  | Draft Curation Account Matrix Requirements/Use Cases | 1w | 2010-06-08 A | 2010-06-14 | 11, 5 | 50% | 0d |  |
| 13 |  | Draft Data Availability Matrix Requirements/Use Cases | 3d | 2010-06-04 | 2010-06-08 | 5 |  | 78.12d |  |
| 14 |  | Determine ISO/MinChar Standards | 2d | 2010-06-09 | 2010-06-10 | 13 |  | 78.12d |  |
| 15 |  | Milestone: Review Requirements | 1d | 2010-06-15 | 2010-06-15 | 12 |  | 0d |  |
| 16 | 1.1.3 | **Analysis and Design** | 3d | 2010-06-16 | 2010-06-18 |  |  | 0d |  |
| 17 |  | Design Data Availability Matrix | 3d | 2010-06-16 | 2010-06-18 | 15 |  | 0d |  |
| 18 | 1.1.4 | **Implementation** | 4d | 2010-06-21 A | 2010-06-24 | 16 | 19% | 0d |  |
| 19 |  | Implement Data Availabilty Matrix Wireframes | 3d | 2010-06-21 A | 2010-06-23 |  | 25% | 0d |  |
| 20 |  | Milestone: Review Wireframes | 1d | 2010-06-24 | 2010-06-24 | 19 |  | 0d |  |
| 21 | 1.1.5 | **Testing** | 1d | 2010-06-25 | 2010-06-25 | 18 |  | 64.62d |  |
| 22 |  | Discuss Test Approach | 1d | 2010-06-25 | 2010-06-25 |  |  | 67.12d |  |
| 23 | 1.1.6 | **Environment** | 7.12d | 2010-06-04 A | 2010-06-15 |  | 99% | 73.5d |  |
| 24 |  | Setup the Development Environment | 2d | 2010-06-04 A | 2010-06-07 A | 5 | 100% |  |  |
| 25 |  | Submit BDA Project Setup Request | 3d | 2010-06-04 A | 2010-06-08 A | 5 | 100% |  |  |
| 26 |  | Review new BDA Utilities | 4d | 2010-06-09 A | 2010-06-14 A | 25 | 100% |  |  |
| 27 |  | Draft/Submit BDA Development Checklist | 1h | 2010-06-09 A | 2010-06-09 A | 25 | 100% |  |  |
| 28 |  | Draft/Submit Gap Analysis | 8h | 2010-06-09 A | 2010-06-10 | 27 | 95% | 2.94d |  |
| 29 |  | Draft/Submit Initial BDA Project Plan | 1h | 2010-06-15 A | 2010-06-15 | 28, 26 | 50% | 0d |  |
| 30 |  | Deliverable: BDA Project Plan | 0d | 2010-06-15 A | 2010-06-15 | 29 | 50% | 76d |  |
| 31 | 1.2 | **Elaboration** | 26.5d | 2010-06-25 A | 2010-08-02 | 18 | 1% | 39.12d |  |
| 32 | 1.2.1 | **Project Management** | 1d | 2010-07-09 | 2010-07-09 |  |  | 54.62d |  |
| 33 | 1.2.1.1 | **Report Project Status** | 1d | 2010-07-09 | 2010-07-09 |  |  | 54.62d |  |
| 34 |  | Draft Monthly Status Report | 1d | 2010-07-09 | 2010-07-09 |  |  | 57.12d | start no earlier than 2010-07-09 |
| 35 |  | Deliverable: Monthly Status Report | 0d | 2010-07-09 | 2010-07-09 | 34 |  | 57.12d |  |
| 36 | 1.2.2 | **Iteration 1: Curation Account Mgmt** | 24d | 2010-06-25 | 2010-07-28 |  |  | 26.62d |  |
| 37 | 1.2.2.1 | **Requirements** | 3d | 2010-06-25 | 2010-06-29 |  |  | 59.62d |  |
| 38 |  | Update Requirements/Use Cases | 3d | 2010-06-25 | 2010-06-29 |  |  | 62.12d |  |
| 39 | 1.2.2.2 | **Analysis and Design** | 3d | 2010-06-25 | 2010-06-29 |  |  | 26.62d |  |
| 40 |  | Update Design Specification | 3d | 2010-06-25 | 2010-06-29 |  |  | 29.12d |  |
| 41 | 1.2.2.3 | **Implementation** | 11d | 2010-06-30 | 2010-07-14 | 39 |  | 26.62d |  |
| 42 |  | Implement Wireframes | 3d | 2010-06-30 | 2010-07-02 |  |  | 51.12d |  |
| 43 |  | Milestone: Review Wireframes | 1d | 2010-07-05 | 2010-07-05 | 42 |  | 51.12d |  |
| 44 |  | Implement Curation Account Mgmt | 2w | 2010-06-30 | 2010-07-13 |  |  | 44.12d |  |
| 45 |  | Milestone: Demonstrate Data Availability Matrix | 1d | 2010-07-14 | 2010-07-14 | 44 |  | 44.12d |  |
| 46 | 1.2.2.4 | **Testing** | 21d | 2010-06-30 | 2010-07-28 |  |  | 41.62d |  |
| 47 |  | Draft Test Plan/Cases | 3d | 2010-06-30 | 2010-07-02 | 37 |  | 62.12d |  |
| 48 |  | Milestone: Deploy to QA | 2d | 2010-07-15 | 2010-07-16 | 41 |  | 44.12d |  |
| 49 |  | Test on QA | 1w | 2010-07-19 | 2010-07-23 | 48 |  | 44.12d |  |
| 50 |  | Resolve Defects | 1w | 2010-07-19 | 2010-07-23 | 48 |  | 47.12d |  |
| 51 |  | Re-Deploy/Test | 3d | 2010-07-26 | 2010-07-28 | 49 |  | 44.12d |  |
| 52 | 1.2.3 | **Iteration 2: Data Availability Matrix** | 20.5d | 2010-07-05 | 2010-08-02 | 18 |  | 0.5d |  |
| 53 | 1.2.3.1 | **Requirements** | 2d | 2010-07-05 | 2010-07-06 |  |  | 15.5d |  |
| 54 |  | Update Requirements/Use Cases | 2d | 2010-07-05 | 2010-07-06 |  |  | 18d |  |
| 55 | 1.2.3.2 | **Analysis and Design** | 2d | 2010-07-05 | 2010-07-06 |  |  | 0.5d |  |
| 56 |  | Update Design Specification | 2d | 2010-07-05 | 2010-07-06 |  |  | 0.5d |  |
| 57 | 1.2.3.3 | **Implementation** | 8.5d | 2010-07-07 | 2010-07-19 | 55 |  | 0.5d |  |
| 58 |  | Implement Data Availability Matrix | 1.5w | 2010-07-07 | 2010-07-16 |  |  | 0.5d |  |
| 59 |  | Milestone: Demonstrate Data Availability Matrix | 1d | 2010-07-16 | 2010-07-19 | 58 |  | 0.5d |  |
| 60 | 1.2.3.4 | **Testing** | 18.5d | 2010-07-07 | 2010-08-02 |  |  | 0.5d |  |
| 61 |  | Draft Test Plan/Cases | 3d | 2010-07-07 | 2010-07-09 | 53 |  | 18d |  |
| 62 |  | Milestone: Deploy to QA | 2d | 2010-07-19 | 2010-07-21 | 57 |  | 0.5d |  |
| 63 |  | Test on QA | 1w | 2010-07-21 | 2010-07-28 | 62 |  | 0.5d |  |
| 64 |  | Resolve Defects | 1w | 2010-07-21 | 2010-07-28 | 62 |  | 3d |  |
| 65 |  | Re-Deploy/Test | 3d | 2010-07-28 | 2010-08-02 | 63 |  | 0.5d |  |
| 66 | 1.2.4 | **Environment** | 26.38d | 2010-06-25 A | 2010-08-02 |  | 4% | 3d |  |
| 67 |  | Draft ARC | 8h | 2010-06-25 A | 2010-06-25 A |  | 100% |  |  |
| 68 |  | Update/Submit Final Wiki Project Plan | 1w | 2010-06-28 | 2010-07-02 | 67 |  | 5.5d |  |
| 69 |  | Create Systems Request for BDA Setup | 1w | 2010-07-05 | 2010-07-09 | 68 |  | 5.5d |  |
| 70 |  | Attend Project Plan Review | 1w | 2010-07-12 | 2010-07-16 | 69 |  | 5.5d |  |

| ID | WBS | Task | Duration | Start | Finish | Predecessors | Total float | Constraint |
| --- | --- | --- | --- | --- | --- | --- | --- | --- |
| 71 |  | Submit ARC to Systems | 1w | 2010-07-19 | 2010-07-23 | 70 | 5.5d |  |
| 72 |  | Meet with BDA to Review Installation | 1d | 2010-07-26 | 2010-07-26 | 71 | 5.5d |  |
| 73 |  | Identify/Externalize Properities | 1d | 2010-07-27 | 2010-07-27 | 72 | 5.5d |  |
| 74 |  | Implement BDA Templates | 1d | 2010-07-28 | 2010-07-28 | 73 | 5.5d |  |
| 75 |  | Eliminate Build Script Duality | 3h | 2010-07-29 | 2010-07-29 | 74 | 5.5d |  |
| 76 |  | Verify JADS Compatible | 4h | 2010-07-29 | 2010-07-29 | 75 | 5.5d |  |
| 77 |  | Setup CI Server | 2h | 2010-07-29 | 2010-07-30 | 76 | 5.5d |  |
| 78 |  | Milestone: First Build to DEV (Command Line Deployment) | 1d | 2010-07-30 | 2010-08-02 | 77 | 5.5d |  |
| 79 |  | Setup Anthill Pro (DEV Target) | 2h | 2010-08-02 | 2010-08-02 | 78 | 14.5d |  |
| 80 | 1.3 | **Construction** | 20.5d | 2010-08-02 | 2010-08-30 | 52 | 0d |  |
| 81 | 1.3.1 | **Project Management** | 1d | 2010-08-10 | 2010-08-10 |  | 14.5d |  |
| 82 | 1.3.1.1 | **Report Project Status** | 1d | 2010-08-10 | 2010-08-10 |  | 14.5d |  |
| 83 |  | Draft Monthly Status Report | 1d | 2010-08-10 | 2010-08-10 |  | 17d | start no earlier than 2010-08-10 |
| 84 |  | Deliverable: Monthly Status Report | 0d | 2010-08-10 | 2010-08-10 | 83 | 17d |  |
| 85 | 1.3.2 | **Iteration 1: Defect Fixes/Enhancements** | 10d | 2010-08-02 | 2010-08-16 |  | 0.5d |  |
| 86 |  | Requirements | 1w | 2010-08-02 | 2010-08-09 |  | 5d |  |
| 87 |  | Analysis and Design | 1w | 2010-08-02 | 2010-08-09 |  | 5d |  |
| 88 |  | Implementation | 2w | 2010-08-02 | 2010-08-16 |  | 0.5d |  |
| 89 | 1.3.3 | **Environment** | 3.12d | 2010-08-02 | 2010-08-05 | 66 | 2.88d |  |
| 90 |  | Implement GUI Installers | 2d | 2010-08-02 | 2010-08-04 |  | 2.88d |  |
| 91 |  | Create Wiki-based Deployment Insructions | 4h | 2010-08-04 | 2010-08-04 | 90 | 17.88d |  |
| 92 |  | Milestone: First Build to QA (Command Line Deployment) | 2h | 2010-08-05 | 2010-08-05 | 91 | 17.88d |  |
| 93 |  | Setup Anthill Pro (QA Target) | 1h | 2010-08-05 | 2010-08-05 | 92 | 17.88d |  |
| 94 |  | Configure Nightly AntHill Pro Track (DEV) | 1h | 2010-08-05 | 2010-08-05 | 93 | 17.88d |  |
| 95 |  | Ask BDA Team to Add Project to Certification Dashboard | 1h | 2010-08-05 | 2010-08-05 | 94 | 17.88d |  |
| 96 |  | Milestone: Deploy to QA | 0d | 2010-08-16 | 2010-08-16 | 85 | 0.5d |  |
| 97 |  | Test on QA | 1w | 2010-08-16 | 2010-08-23 | 96 | 0.5d |  |
| 98 |  | Sent Request for AppScan on QA | 1d | 2010-08-30 | 2010-08-30 | 97 | 0d |  |
| 99 |  | Re-Deploy/Resolve Defects | 1w | 2010-08-23 | 2010-08-30 | 96, 97 | 0.5d |  |
| 100 | 1.4 | **Transition** | 18.12d | 2010-08-31 | 2010-09-24 | 80 | 0d |  |
| 101 | 1.4.1 | **Project Management** | 1d | 2010-09-10 | 2010-09-10 |  | 9.12d |  |
| 102 | 1.4.1.1 | **Report Project Status** | 1d | 2010-09-10 | 2010-09-10 |  | 9.12d |  |
| 103 |  | Draft Monthly Status Report | 1d | 2010-09-10 | 2010-09-10 |  | 12.12d | start no earlier than 2010-09-10 |
| 104 |  | Deliverable: Monthly Status Report | 0d | 2010-09-10 | 2010-09-10 | 103 | 12.12d |  |
| 105 | 1.4.2 | **Requirements** | 5d | 2010-08-31 | 2010-09-06 |  | 13.12d |  |
| 106 |  | Finalize Use Case Specification | 1w | 2010-08-31 | 2010-09-06 |  | 13.12d |  |
| 107 |  | Deliverable: Use Case Specification | 0d | 2010-09-06 | 2010-09-06 | 106 | 13.12d |  |
| 108 | 1.4.3 | **Analysis and Design** | 10d | 2010-08-31 | 2010-09-13 |  | 3.12d |  |
| 109 |  | Finalize Design Specification | 2w | 2010-08-31 | 2010-09-13 |  | 3.12d |  |
| 110 |  | Deliverable: Design Specification | 0d | 2010-09-13 | 2010-09-13 | 109 | 3.12d |  |
| 111 | 1.4.4 | **Implementation** | 5d | 2010-09-14 | 2010-09-20 | 108 | 3.12d |  |
| 112 |  | Finalize Installation Guide | 1w | 2010-09-14 | 2010-09-20 |  | 3.12d |  |
| 113 |  | Deliverable: Installation Guide | 0d | 2010-09-20 | 2010-09-20 | 112 | 3.12d |  |
| 114 |  | Package Software | 1w | 2010-09-14 | 2010-09-20 |  | 3.12d |  |
| 115 |  | Deliverable: Packaged Software | 0d | 2010-09-20 | 2010-09-20 | 114 | 3.12d |  |
| 116 |  | Update Wiki Content | 3d | 2010-09-14 | 2010-09-16 |  | 5.12d |  |
| 117 | 1.4.5 | **Testing** | 18.12d | 2010-08-31 | 2010-09-24 |  | 0d |  |
| 118 |  | Request STAGE Dry Run Test | 4h | 2010-08-31 | 2010-08-31 |  | 0d |  |
| 119 |  | Request App Scan on STAGE | 4h | 2010-08-31 | 2010-08-31 | 118 | 0d |  |
| 120 |  | Milestone: Deploy to STAGE | 2d | 2010-09-01 | 2010-09-02 | 119 | 0d |  |
| 121 |  | Test on STAGE | 1w | 2010-09-03 | 2010-09-09 | 120 | 0d |  |
| 122 |  | Send Request for AppScan | 1d | 2010-09-10 | 2010-09-10 | 121 | 9.12d |  |
| 123 |  | Re-Deploy/Resolve Defects | 1w | 2010-09-10 | 2010-09-16 | 121 | 0d |  |
| 124 |  | Request Systems Team PROD Deployment Setup | 1h | 2010-09-17 | 2010-09-17 | 123 | 0d |  |
| 125 |  | Milestone: Deploy to PROD | 2d | 2010-09-17 | 2010-09-21 | 124 | 0d |  |
| 126 |  | Test on PROD | 2d | 2010-09-21 | 2010-09-23 | 125 | 0d |  |
| 127 |  | Milestone: Announce Availability to the Community | 1d | 2010-09-23 | 2010-09-24 | 126 | 0d |  |
| 128 |  | End caNanoLab 1.5.2 | 0d | 2010-08-02 | 2010-08-02 |  | 36.12d | start no earlier than 2010-08-02 |

## Version 2 (saved 2010-06-14, file caNanoLab_1.5.2_Project_Plan.mpp)

Note of the change: SVN-Revision: 18501

Last finish stays 2010-09-24. Complete tasks 6 → 10.

Changed:

| ID | Task | Start | Finish | Complete | Total float | Other |
| --- | --- | --- | --- | --- | --- | --- |
| 1 | **caNanoLab 1.5.2** |  |  | 8% → 14% | 0d → 3d | baseline start none → 2010-06-01; baseline finish none → 2010-09-24 |
| 2 | **Inception** |  |  | 45% → 65% | 64.62d → 67.12d | baseline start none → 2010-06-01; baseline finish none → 2010-06-25 |
| 3 | **Project Mangement** |  |  | 53% → 67% | 75.62d → 78.12d | baseline start 2008-01-28 → 2010-06-01; baseline finish 2008-03-13 → 2010-06-10 |
| 4 | Determine Initial Scope |  |  |  | 1.8d → 6.4d | baseline start 2008-01-28 → 2010-06-01; baseline finish 2008-01-29 → 2010-06-01 |
| 5 | Draft Initial Project Plan |  |  |  | 2.5d → 4.6d | baseline start 2008-01-30 → 2010-06-02; baseline finish 2008-03-04 → 2010-06-03 |
| 6 | Review/Update Project Plan | 2010-06-04 A |  | 0% → 50% | 80.12d → 78.12d | baseline start 2008-07-10 → 2010-06-04; baseline finish 2008-07-10 → 2010-06-07 |
| 7 | Deliverable: Baselined Project Plan |  |  |  |  | baseline start 2008-03-25 → 2010-06-08; baseline finish 2008-03-25 → 2010-06-08 |
| 8 | **Report Project Status** |  |  |  |  | baseline start 2008-07-07 → 2010-06-10; baseline finish 2008-07-18 → 2010-06-10 |
| 9 | Draft Monthly Status Report |  |  |  |  | baseline start none → 2010-06-10; baseline finish none → 2010-06-10 |
| 10 | **Requirements** |  |  | 19% → 65% | 72.62d → 72.12d | baseline start none → 2010-06-04; baseline finish none → 2010-06-15 |
| 11 | Research Group Accounts on CBIIT Projects | 2010-06-04 A |  | 0% → 80% | 2.5d → 3d | baseline start none → 2010-06-04; baseline finish none → 2010-06-07 |
| 12 | Draft Curation Account Matrix Requirements/Use Cases |  |  |  | 0d → 0.5d | baseline start none → 2010-06-08; baseline finish none → 2010-06-14 |
| 13 | Draft Data Availability Matrix Requirements/Use Cases | 2010-06-04 A |  | 0% → 95% | 78.12d → 76.12d | baseline start none → 2010-06-04; baseline finish none → 2010-06-08 |
| 14 | Determine ISO/MinChar Standards | 2010-06-09 A |  | 0% → 50% | 78.12d → 75.12d | baseline start none → 2010-06-09; baseline finish none → 2010-06-10 |
| 15 | Milestone: Review Requirements | 2010-06-15 A |  | 0% → 50% |  | baseline start none → 2010-06-15; baseline finish none → 2010-06-15 |
| 16 | **Analysis and Design** |  |  |  |  | baseline start none → 2010-06-16; baseline finish none → 2010-06-18 |
| 17 | Design Data Availability Matrix |  |  |  |  | baseline start none → 2010-06-16; baseline finish none → 2010-06-18 |
| 18 | **Implementation** |  |  | 19% → 38% |  | baseline start none → 2010-06-21; baseline finish none → 2010-06-24 |
| 19 | Implement Data Availabilty Matrix Wireframes |  |  | 25% → 50% |  | baseline start none → 2010-06-21; baseline finish none → 2010-06-23 |
| 20 | Milestone: Review Wireframes |  |  |  |  | baseline start none → 2010-06-24; baseline finish none → 2010-06-24 |
| 21 | **Testing** |  |  |  |  | baseline start none → 2010-06-25; baseline finish none → 2010-06-25 |
| 22 | Discuss Test Approach |  |  |  |  | baseline start none → 2010-06-25; baseline finish none → 2010-06-25 |
| 23 | **Environment** |  | 2010-06-15 A | 99% → 100% | 73.5d → none | baseline start none → 2010-06-04; baseline finish none → 2010-06-15 |
| 24 | Setup the Development Environment |  |  |  |  | baseline start none → 2010-06-04; baseline finish none → 2010-06-07 |
| 25 | Submit BDA Project Setup Request |  |  |  |  | baseline start none → 2010-06-04; baseline finish none → 2010-06-08 |
| 26 | Review new BDA Utilities |  |  |  |  | baseline start none → 2010-06-09; baseline finish none → 2010-06-14 |
| 27 | Draft/Submit BDA Development Checklist |  |  |  |  | baseline start none → 2010-06-09; baseline finish none → 2010-06-09 |
| 28 | Draft/Submit Gap Analysis |  | 2010-06-10 A | 95% → 100% | 2.94d → none | baseline start none → 2010-06-09; baseline finish none → 2010-06-10 |
| 29 | Draft/Submit Initial BDA Project Plan |  | 2010-06-15 A | 50% → 100% | 0d → none | baseline start none → 2010-06-15; baseline finish none → 2010-06-15 |
| 30 | Deliverable: BDA Project Plan |  | 2010-06-15 A | 50% → 100% | 76d → none | baseline start none → 2010-06-15; baseline finish none → 2010-06-15 |
| 31 | **Elaboration** |  |  | 1% → 6% |  | baseline start none → 2010-06-25; baseline finish none → 2010-08-02 |
| 32 | **Project Management** |  |  |  |  | baseline start none → 2010-07-09; baseline finish none → 2010-07-09 |
| 33 | **Report Project Status** |  |  |  |  | baseline start 2008-07-07 → 2010-07-09; baseline finish 2008-07-18 → 2010-07-09 |
| 34 | Draft Monthly Status Report |  |  |  |  | baseline start none → 2010-07-09; baseline finish none → 2010-07-09 |
| 35 | Deliverable: Monthly Status Report |  |  |  |  | baseline start none → 2010-07-09; baseline finish none → 2010-07-09 |
| 36 | **Iteration 1: Curation Account Mgmt** |  |  |  |  | baseline start none → 2010-06-25; baseline finish none → 2010-07-28 |
| 37 | **Requirements** |  |  |  |  | baseline start none → 2010-06-25; baseline finish none → 2010-06-29 |
| 38 | Update Requirements/Use Cases |  |  |  |  | baseline start none → 2010-06-25; baseline finish none → 2010-06-29 |
| 39 | **Analysis and Design** |  |  |  |  | baseline start none → 2010-06-25; baseline finish none → 2010-06-29 |
| 40 | Update Design Specification |  |  |  |  | baseline start none → 2010-06-25; baseline finish none → 2010-06-29 |
| 41 | **Implementation** |  |  |  |  | baseline start none → 2010-06-30; baseline finish none → 2010-07-14 |
| 42 | Implement Wireframes |  |  |  |  | baseline start none → 2010-06-30; baseline finish none → 2010-07-02 |
| 43 | Milestone: Review Wireframes |  |  |  |  | baseline start none → 2010-07-05; baseline finish none → 2010-07-05 |
| 44 | Implement Curation Account Mgmt |  |  |  |  | baseline start none → 2010-06-30; baseline finish none → 2010-07-13 |
| 45 | Milestone: Demonstrate Data Availability Matrix |  |  |  |  | baseline start none → 2010-07-14; baseline finish none → 2010-07-14 |
| 46 | **Testing** |  |  |  |  | baseline start none → 2010-06-30; baseline finish none → 2010-07-28 |
| 47 | Draft Test Plan/Cases |  |  |  |  | baseline start none → 2010-06-30; baseline finish none → 2010-07-02 |
| 48 | Milestone: Deploy to QA |  |  |  |  | baseline start none → 2010-07-15; baseline finish none → 2010-07-16 |
| 49 | Test on QA |  |  |  |  | baseline start none → 2010-07-19; baseline finish none → 2010-07-23 |
| 50 | Resolve Defects |  |  |  |  | baseline start none → 2010-07-19; baseline finish none → 2010-07-23 |
| 51 | Re-Deploy/Test |  |  |  |  | baseline start none → 2010-07-26; baseline finish none → 2010-07-28 |
| 52 | **Iteration 2: Data Availability Matrix** |  |  |  |  | baseline start none → 2010-07-05; baseline finish none → 2010-08-02 |
| 53 | **Requirements** |  |  |  | 15.5d → 16d | baseline start none → 2010-07-05; baseline finish none → 2010-07-06 |
| 54 | Update Requirements/Use Cases |  |  |  | 18d → 16d | baseline start none → 2010-07-05; baseline finish none → 2010-07-06 |
| 55 | **Analysis and Design** |  |  |  |  | baseline start none → 2010-07-05; baseline finish none → 2010-07-06 |
| 56 | Update Design Specification |  |  |  |  | baseline start none → 2010-07-05; baseline finish none → 2010-07-06 |
| 57 | **Implementation** |  |  |  |  | baseline start none → 2010-07-07; baseline finish none → 2010-07-19 |
| 58 | Implement Data Availability Matrix |  |  |  |  | baseline start none → 2010-07-07; baseline finish none → 2010-07-16 |
| 59 | Milestone: Demonstrate Data Availability Matrix |  |  |  |  | baseline start none → 2010-07-16; baseline finish none → 2010-07-19 |
| 60 | **Testing** |  |  |  |  | baseline start none → 2010-07-07; baseline finish none → 2010-08-02 |
| 61 | Draft Test Plan/Cases |  |  |  | 18d → 16d | baseline start none → 2010-07-07; baseline finish none → 2010-07-09 |
| 62 | Milestone: Deploy to QA |  |  |  |  | baseline start none → 2010-07-19; baseline finish none → 2010-07-21 |
| 63 | Test on QA |  |  |  |  | baseline start none → 2010-07-21; baseline finish none → 2010-07-28 |
| 64 | Resolve Defects |  |  |  | 3d → 3.5d | baseline start none → 2010-07-21; baseline finish none → 2010-07-28 |
| 65 | Re-Deploy/Test |  |  |  |  | baseline start none → 2010-07-28; baseline finish none → 2010-08-02 |
| 66 | **Environment** |  |  | 4% → 23% | 3d → 2.5d | baseline start none → 2010-06-25; baseline finish none → 2010-08-02 |
| 67 | Draft ARC |  |  |  |  | baseline start none → 2010-06-25; baseline finish none → 2010-06-25 |
| 68 | Update/Submit Final Wiki Project Plan | 2010-06-28 A | 2010-07-02 A | 0% → 100% | 5.5d → none | baseline start none → 2010-06-28; baseline finish none → 2010-07-02 |
| 69 | Create Systems Request for BDA Setup |  |  |  | 5.5d → 2.5d | baseline start none → 2010-07-05; baseline finish none → 2010-07-09 |
| 70 | Attend Project Plan Review |  |  |  | 5.5d → 2.5d | baseline start none → 2010-07-12; baseline finish none → 2010-07-16 |

| ID | Task | Start | Finish | Total float | Predecessors | Other |
| --- | --- | --- | --- | --- | --- | --- |
| 71 | Submit ARC to Systems |  |  | 5.5d → 2.5d |  | baseline start none → 2010-07-19; baseline finish none → 2010-07-23 |
| 72 | Meet with BDA to Review Installation |  |  | 5.5d → 2.5d |  | baseline start none → 2010-07-26; baseline finish none → 2010-07-26 |
| 73 | Identify/Externalize Properities |  |  | 5.5d → 2.5d |  | baseline start none → 2010-07-27; baseline finish none → 2010-07-27 |
| 74 | Implement BDA Templates |  |  | 5.5d → 2.5d |  | baseline start none → 2010-07-28; baseline finish none → 2010-07-28 |
| 75 | Eliminate Build Script Duality |  |  | 5.5d → 2.5d |  | baseline start none → 2010-07-29; baseline finish none → 2010-07-29 |
| 76 | Verify JADS Compatible |  |  | 5.5d → 2.5d |  | baseline start none → 2010-07-29; baseline finish none → 2010-07-29 |
| 77 | Setup CI Server |  |  | 5.5d → 2.5d |  | baseline start none → 2010-07-29; baseline finish none → 2010-07-30 |
| 78 | Milestone: First Build to DEV (Command Line Deployment) |  |  | 5.5d → 2.5d |  | baseline start none → 2010-07-30; baseline finish none → 2010-08-02 |
| 79 | Setup Anthill Pro (DEV Target) |  |  | 14.5d → 2.5d |  | baseline start none → 2010-08-02; baseline finish none → 2010-08-02 |
| 80 | **Construction** |  |  |  |  | baseline start none → 2010-08-02; baseline finish none → 2010-08-30 |
| 81 | **Project Management** |  |  | 14.5d → 14d |  | baseline start none → 2010-08-10; baseline finish none → 2010-08-10 |
| 82 | **Report Project Status** |  |  | 14.5d → 14d |  | baseline start 2008-07-07 → 2010-08-10; baseline finish 2008-07-18 → 2010-08-10 |
| 83 | Draft Monthly Status Report |  |  | 17d → 14d |  | baseline start none → 2010-08-10; baseline finish none → 2010-08-10 |
| 84 | Deliverable: Monthly Status Report |  |  | 17d → 14d |  | baseline start none → 2010-08-10; baseline finish none → 2010-08-10 |
| 85 | **Iteration 1: Defect Fixes/Enhancements** |  |  |  |  | baseline start none → 2010-08-02; baseline finish none → 2010-08-16 |
| 86 | Requirements |  |  | 5d → 5.5d |  | baseline start none → 2010-08-02; baseline finish none → 2010-08-09 |
| 87 | Analysis and Design |  |  | 5d → 5.5d |  | baseline start none → 2010-08-02; baseline finish none → 2010-08-09 |
| 88 | Implementation |  |  |  |  | baseline start none → 2010-08-02; baseline finish none → 2010-08-16 |
| 89 | **Environment** |  |  | 2.88d → 2.38d |  | baseline start none → 2010-08-02; baseline finish none → 2010-08-05 |
| 90 | Implement GUI Installers |  |  | 2.88d → 2.38d |  | baseline start none → 2010-08-02; baseline finish none → 2010-08-04 |
| 91 | Create Wiki-based Deployment Insructions |  |  | 17.88d → 2.38d |  | baseline start none → 2010-08-04; baseline finish none → 2010-08-04 |
| 92 | Milestone: First Build to QA (Command Line Deployment) |  |  | 17.88d → 17.38d |  | baseline start none → 2010-08-05; baseline finish none → 2010-08-05 |
| 93 | Setup Anthill Pro (QA Target) |  |  | 17.88d → 17.38d |  | baseline start none → 2010-08-05; baseline finish none → 2010-08-05 |
| 94 | Configure Nightly AntHill Pro Track (DEV) |  |  | 17.88d → 17.38d |  | baseline start none → 2010-08-05; baseline finish none → 2010-08-05 |
| 95 | Ask BDA Team to Add Project to Certification Dashboard |  |  | 17.88d → 17.38d |  | baseline start none → 2010-08-05; baseline finish none → 2010-08-05 |
| 96 | Milestone: Deploy to QA |  |  |  |  | baseline start none → 2010-08-16; baseline finish none → 2010-08-16 |
| 97 | Test on QA |  |  |  |  | baseline start none → 2010-08-16; baseline finish none → 2010-08-23 |
| 98 | Sent Request for AppScan on QA |  |  |  |  | baseline start none → 2010-08-30; baseline finish none → 2010-08-30 |
| 99 | Re-Deploy/Resolve Defects |  |  |  |  | baseline start none → 2010-08-23; baseline finish none → 2010-08-30 |
| 100 | **Transition** |  |  |  |  | baseline start none → 2010-08-31; baseline finish none → 2010-09-24 |
| 101 | **Project Management** |  |  |  |  | baseline start none → 2010-09-10; baseline finish none → 2010-09-10 |
| 102 | **Report Project Status** |  |  |  |  | baseline start 2008-07-07 → 2010-09-10; baseline finish 2008-07-18 → 2010-09-10 |
| 103 | Draft Monthly Status Report |  |  | 12.12d → 9.12d |  | baseline start none → 2010-09-10; baseline finish none → 2010-09-10 |
| 104 | Deliverable: Monthly Status Report |  |  | 12.12d → 9.12d |  | baseline start none → 2010-09-10; baseline finish none → 2010-09-10 |
| 105 | **Requirements** |  |  |  |  | baseline start none → 2010-08-31; baseline finish none → 2010-09-06 |
| 106 | Finalize Use Case Specification |  |  |  |  | baseline start none → 2010-08-31; baseline finish none → 2010-09-06 |
| 107 | Deliverable: Use Case Specification |  |  |  |  | baseline start none → 2010-09-06; baseline finish none → 2010-09-06 |
| 108 | **Analysis and Design** |  |  |  |  | baseline start none → 2010-08-31; baseline finish none → 2010-09-13 |
| 109 | Finalize Design Specification |  |  |  |  | baseline start none → 2010-08-31; baseline finish none → 2010-09-13 |
| 110 | Deliverable: Design Specification |  |  |  |  | baseline start none → 2010-09-13; baseline finish none → 2010-09-13 |
| 111 | **Implementation** |  |  |  |  | baseline start none → 2010-09-14; baseline finish none → 2010-09-20 |
| 112 | Finalize Installation Guide |  |  |  |  | baseline start none → 2010-09-14; baseline finish none → 2010-09-20 |
| 113 | Deliverable: Installation Guide |  |  |  |  | baseline start none → 2010-09-20; baseline finish none → 2010-09-20 |
| 114 | Package Software |  |  |  |  | baseline start none → 2010-09-14; baseline finish none → 2010-09-20 |
| 115 | Deliverable: Packaged Software |  |  |  |  | baseline start none → 2010-09-20; baseline finish none → 2010-09-20 |
| 116 | Update Wiki Content |  |  |  |  | baseline start none → 2010-09-14; baseline finish none → 2010-09-16 |
| 117 | **Testing** |  |  |  |  | baseline start none → 2010-08-31; baseline finish none → 2010-09-24 |
| 118 | Request STAGE Dry Run Test |  |  |  |  | baseline start none → 2010-08-31; baseline finish none → 2010-08-31 |
| 119 | Request App Scan on STAGE |  |  |  |  | baseline start none → 2010-08-31; baseline finish none → 2010-08-31 |
| 120 | Milestone: Deploy to STAGE |  |  |  |  | baseline start none → 2010-09-01; baseline finish none → 2010-09-02 |
| 121 | Test on STAGE |  |  |  |  | baseline start none → 2010-09-03; baseline finish none → 2010-09-09 |
| 122 | Send Request for AppScan |  |  |  |  | baseline start none → 2010-09-10; baseline finish none → 2010-09-10 |
| 123 | Re-Deploy/Resolve Defects |  |  |  |  | baseline start none → 2010-09-10; baseline finish none → 2010-09-16 |
| 124 | Request Systems Team PROD Deployment Setup |  |  |  |  | baseline start none → 2010-09-17; baseline finish none → 2010-09-17 |
| 125 | Milestone: Deploy to PROD |  |  |  |  | baseline start none → 2010-09-17; baseline finish none → 2010-09-21 |
| 126 | Test on PROD |  |  |  |  | baseline start none → 2010-09-21; baseline finish none → 2010-09-23 |
| 127 | Milestone: Announce Availability to the Community |  |  |  |  | baseline start none → 2010-09-23; baseline finish none → 2010-09-24 |
| 128 | End caNanoLab 1.5.2 | 2010-08-02 → 2010-09-24 (+53d) | 2010-08-02 → 2010-09-24 (+53d) | 36.12d → 0d | none → 100 | baseline start none → 2010-09-24; baseline finish none → 2010-09-24 |

## Version 3 (saved 2010-07-12, file caNanoLab_1.5.2_Project_Plan.mpp)

Note of the change: SVN-Revision: 18606

Last finish stays 2010-09-24. Complete tasks 10 → 30.

Changed:

| ID | Task | Start | Finish | Complete | Total float |
| --- | --- | --- | --- | --- | --- |
| 1 | **caNanoLab 1.5.2** |  |  | 14% → 31% | 3d → 0.5d |
| 2 | **Inception** |  |  | 65% → 99% | 67.12d → 64.12d |
| 3 | **Project Mangement** |  | 2010-06-10 A | 67% → 100% | 78.12d → none |
| 4 | Determine Initial Scope |  | 2010-06-01 A | 90% → 100% | 6.4d → none |
| 5 | Draft Initial Project Plan |  | 2010-06-03 A | 90% → 100% | 4.6d → none |
| 6 | Review/Update Project Plan |  | 2010-06-07 A | 50% → 100% | 78.12d → none |
| 7 | Deliverable: Baselined Project Plan | 2010-06-08 A | 2010-06-08 A | 0% → 100% | 80.12d → none |
| 10 | **Requirements** |  |  | 65% → 98% |  |
| 11 | Research Group Accounts on CBIIT Projects |  |  | 80% → 90% | 3d → 78.12d |
| 12 | Draft Curation Account Matrix Requirements/Use Cases |  | 2010-06-14 A | 50% → 100% | 0.5d → none |
| 13 | Draft Data Availability Matrix Requirements/Use Cases |  | 2010-06-08 A | 95% → 100% | 76.12d → none |
| 14 | Determine ISO/MinChar Standards |  | 2010-06-10 A | 50% → 100% | 75.12d → none |
| 15 | Milestone: Review Requirements |  | 2010-06-15 A | 50% → 100% | 0d → none |
| 16 | **Analysis and Design** | 2010-06-16 A | 2010-06-18 A | 0% → 100% | 0d → none |
| 17 | Design Data Availability Matrix | 2010-06-16 A | 2010-06-18 A | 0% → 100% | 0d → none |
| 18 | **Implementation** |  | 2010-06-24 A | 38% → 100% | 0d → none |
| 19 | Implement Data Availabilty Matrix Wireframes |  | 2010-06-23 A | 50% → 100% | 0d → none |
| 20 | Milestone: Review Wireframes | 2010-06-24 A | 2010-06-24 A | 0% → 100% | 0d → none |
| 21 | **Testing** | 2010-06-25 A | 2010-06-25 A | 0% → 100% | 64.62d → none |
| 22 | Discuss Test Approach | 2010-06-25 A | 2010-06-25 A | 0% → 100% | 67.12d → none |
| 31 | **Elaboration** |  |  | 6% → 31% |  |
| 32 | **Project Management** | 2010-07-09 A | 2010-07-09 A | 0% → 100% | 54.62d → none |
| 33 | **Report Project Status** | 2010-07-09 A | 2010-07-09 A | 0% → 100% | 54.62d → none |
| 34 | Draft Monthly Status Report | 2010-07-09 A | 2010-07-09 A | 0% → 100% | 57.12d → none |
| 35 | Deliverable: Monthly Status Report | 2010-07-09 A | 2010-07-09 A | 0% → 100% | 57.12d → none |
| 36 | **Iteration 1: Curation Account Mgmt** | 2010-06-25 A |  | 0% → 24% | 26.62d → 41.62d |
| 37 | **Requirements** | 2010-06-25 A | 2010-06-29 A | 0% → 100% | 59.62d → none |
| 38 | Update Requirements/Use Cases | 2010-06-25 A | 2010-06-29 A | 0% → 100% | 62.12d → none |
| 39 | **Analysis and Design** | 2010-06-25 A |  | 0% → 10% | 26.62d → 47.79d |
| 40 | Update Design Specification | 2010-06-25 A |  | 0% → 10% | 29.12d → 47.79d |
| 41 | **Implementation** | 2010-06-30 A |  | 0% → 40% | 26.62d → 44.12d |
| 42 | Implement Wireframes | 2010-06-30 A | 2010-07-02 A | 0% → 100% | 51.12d → none |
| 43 | Milestone: Review Wireframes | 2010-07-05 A | 2010-07-05 A | 0% → 100% | 51.12d → none |
| 44 | Implement Curation Account Mgmt | 2010-06-30 A |  | 0% → 20% |  |
| 52 | **Iteration 2: Data Availability Matrix** | 2010-07-05 A |  | 0% → 12% |  |
| 53 | **Requirements** | 2010-07-05 A | 2010-07-06 A | 0% → 100% | 16d → none |
| 54 | Update Requirements/Use Cases | 2010-07-05 A | 2010-07-06 A | 0% → 100% | 16d → none |
| 55 | **Analysis and Design** | 2010-07-05 A |  | 0% → 10% | 0.5d → 1.25d |
| 56 | Update Design Specification | 2010-07-05 A |  | 0% → 10% | 0.5d → 1.25d |
| 57 | **Implementation** | 2010-07-07 A |  | 0% → 18% |  |
| 58 | Implement Data Availability Matrix | 2010-07-07 A |  | 0% → 20% |  |
| 66 | **Environment** |  |  | 23% → 61% |  |
| 69 | Create Systems Request for BDA Setup | 2010-07-05 A | 2010-07-09 A | 0% → 100% | 2.5d → none |
| 71 | Submit ARC to Systems | 2010-07-19 A | 2010-07-23 A | 0% → 100% | 2.5d → none |

## Version 4 (saved 2010-08-04, file caNanoLab_1.5.2_Project_Plan.mpp)

Note of the change: SVN-Revision: 18919

Last finish 2010-09-24 → 2010-09-30 (+6d). Complete tasks 30 → 31.

Added:

| ID | Task | Duration | Start | Finish | Predecessors | Resources |
| --- | --- | --- | --- | --- | --- | --- |
| 67 | Implement BDA Lite | 5w | 2010-06-25 A | 2010-07-29 A |  |  |
| 68 | Provision the DEV server | 3d | 2010-07-30 A | 2010-08-03 A | 67 | Systems |
| 79 | Provision the QA server | 1w | 2010-08-04 | 2010-08-10 |  |  |
| 80 | Provision the STAGE server | 1w | 2010-08-11 | 2010-08-17 | 79 |  |
| 81 | Provision the PROD server | 1w | 2010-08-18 | 2010-08-24 | 80 |  |

Removed: 67 Draft ARC; 68 Update/Submit Final Wiki Project Plan; 69 Create Systems Request for BDA Setup; 70 Attend Project Plan Review; 71 Submit ARC to Systems; 72 Meet with BDA to Review Installation; 73 Identify/Externalize Properities; 74 Implement BDA Templates; 75 Eliminate Build Script Duality; 76 Verify JADS Compatible; 77 Setup CI Server; 78 Milestone: First Build to DEV (Command Line Deployment); 79 Setup Anthill Pro (DEV Target); 90 Implement GUI Installers; 91 Create Wiki-based Deployment Insructions; 92 Milestone: First Build to QA (Command Line Deployment); 93 Setup Anthill Pro (QA Target); 94 Configure Nightly AntHill Pro Track (DEV); 95 Ask BDA Team to Add Project to Certification Dashboard; 118 Request STAGE Dry Run Test

Changed:

| ID | Task | Start | Finish | Duration | Complete | Total float | Predecessors |
| --- | --- | --- | --- | --- | --- | --- | --- |
| 1 | **caNanoLab 1.5.2** |  | 2010-09-24 → 2010-09-30 (+6d) | 83.12d → 87.12d | 31% → 42% | 0.5d → 0d |  |
| 2 | **Inception** |  | 2010-06-25 A |  | 99% → 100% | 64.12d → none |  |
| 10 | **Requirements** |  | 2010-06-15 A |  | 98% → 100% | 72.12d → none |  |
| 11 | Research Group Accounts on CBIIT Projects |  | 2010-06-07 A |  | 90% → 100% | 78.12d → none |  |
| 31 | **Elaboration** |  | 2010-08-02 → 2010-08-03 (+1d) | 26.5d → 28d | 31% → 62% | 39.12d → 41.12d |  |
| 36 | **Iteration 1: Curation Account Mgmt** |  |  |  | 24% → 51% | 41.62d → 45.12d |  |
| 41 | **Implementation** |  |  |  | 40% → 90% | 44.12d → 45.12d |  |
| 44 | Implement Curation Account Mgmt |  |  |  | 20% → 95% | 44.12d → 45.12d |  |
| 46 | **Testing** | 2010-06-30 A |  |  | 0% → 17% | 41.62d → 45.12d |  |
| 47 | Draft Test Plan/Cases | 2010-06-30 A | 2010-07-02 A |  | 0% → 100% | 62.12d → none |  |
| 52 | **Iteration 2: Data Availability Matrix** |  |  |  | 12% → 40% | 0.5d → 0d |  |
| 57 | **Implementation** |  |  |  | 18% → 84% | 0.5d → 0d |  |
| 58 | Implement Data Availability Matrix |  |  |  | 20% → 95% | 0.5d → 0d |  |
| 60 | **Testing** | 2010-07-07 A |  |  | 0% → 17% | 0.5d → 0d |  |
| 61 | Draft Test Plan/Cases | 2010-07-07 A | 2010-07-09 A |  | 0% → 100% | 16d → none |  |
| 66 | **Environment** |  | 2010-08-02 → 2010-08-03 A (+1d) | 26.38d → 28d | 61% → 100% | 2.5d → none |  |
| 69 | **Construction** | 2010-08-02 A | 2010-08-30 → 2010-09-06 (+7d) | 20.5d → 25d | 0% → 2% |  |  |
| 70 | **Project Management** | 2010-08-10 A |  |  | 0% → 90% | 14d → 18.5d |  |
| 71 | **Report Project Status** | 2010-08-10 A |  |  | 0% → 90% | 14d → 18.5d |  |
| 72 | Draft Monthly Status Report | 2010-08-10 A |  |  | 0% → 90% | 14d → 0d |  |
| 73 | Deliverable: Monthly Status Report | 2010-08-10 A |  |  | 0% → 90% | 14d → 18.5d |  |
| 78 | **Environment** | 2010-08-02 → 2010-08-04 (+2d) | 2010-08-05 → 2010-08-24 (+19d) | 3.12d → 15d |  | 2.38d → 8.5d |  |
| 85 | Re-Deploy/Resolve Defects |  | 2010-08-30 → 2010-09-06 (+7d) | 1w → 2w |  | 0.5d → 0d |  |
| 86 | **Transition** | 2010-08-31 → 2010-09-06 (+6d) | 2010-09-24 → 2010-09-30 (+6d) | 18.12d → 17.62d |  |  |  |
| 91 | **Requirements** | 2010-08-31 → 2010-09-06 (+6d) | 2010-09-06 → 2010-09-13 (+7d) |  |  | 13.12d → 12.62d |  |
| 92 | Finalize Use Case Specification | 2010-08-31 → 2010-09-06 (+6d) | 2010-09-06 → 2010-09-13 (+7d) |  |  | 13.12d → 12.62d |  |
| 93 | Deliverable: Use Case Specification | 2010-09-06 → 2010-09-13 (+7d) | 2010-09-06 → 2010-09-13 (+7d) |  |  | 13.12d → 12.62d |  |
| 94 | **Analysis and Design** | 2010-08-31 → 2010-09-06 (+6d) | 2010-09-13 → 2010-09-20 (+7d) |  |  | 3.12d → 2.62d |  |
| 95 | Finalize Design Specification | 2010-08-31 → 2010-09-06 (+6d) | 2010-09-13 → 2010-09-20 (+7d) |  |  | 3.12d → 2.62d |  |
| 96 | Deliverable: Design Specification | 2010-09-13 → 2010-09-20 (+7d) | 2010-09-13 → 2010-09-20 (+7d) |  |  | 3.12d → 2.62d |  |
| 97 | **Implementation** | 2010-09-14 → 2010-09-20 (+6d) | 2010-09-20 → 2010-09-27 (+7d) |  |  | 3.12d → 2.62d |  |
| 98 | Finalize Installation Guide | 2010-09-14 → 2010-09-20 (+6d) | 2010-09-20 → 2010-09-27 (+7d) |  |  | 3.12d → 2.62d |  |
| 99 | Deliverable: Installation Guide | 2010-09-20 → 2010-09-27 (+7d) | 2010-09-20 → 2010-09-27 (+7d) |  |  | 3.12d → 2.62d |  |
| 100 | Package Software | 2010-09-14 → 2010-09-20 (+6d) | 2010-09-20 → 2010-09-27 (+7d) |  |  | 3.12d → 2.62d |  |
| 101 | Deliverable: Packaged Software | 2010-09-20 → 2010-09-27 (+7d) | 2010-09-20 → 2010-09-27 (+7d) |  |  | 3.12d → 2.62d |  |
| 102 | Update Wiki Content | 2010-09-14 → 2010-09-20 (+6d) | 2010-09-16 → 2010-09-23 (+7d) |  |  | 5.12d → 4.62d |  |
| 103 | **Testing** | 2010-08-31 → 2010-09-06 (+6d) | 2010-09-24 → 2010-09-30 (+6d) | 18.12d → 17.62d |  |  |  |
| 104 | Request App Scan on STAGE | 2010-08-31 → 2010-09-06 (+6d) | 2010-08-31 → 2010-09-06 (+6d) |  |  |  | Request STAGE Dry Run Test → none |
| 105 | Milestone: Deploy to STAGE | 2010-09-01 → 2010-09-07 (+6d) | 2010-09-02 → 2010-09-08 (+6d) |  |  |  |  |
| 106 | Test on STAGE | 2010-09-03 → 2010-09-09 (+6d) | 2010-09-09 → 2010-09-15 (+6d) |  |  |  |  |
| 107 | Send Request for AppScan | 2010-09-10 → 2010-09-16 (+6d) | 2010-09-10 → 2010-09-16 (+6d) |  |  |  |  |
| 108 | Re-Deploy/Resolve Defects | 2010-09-10 → 2010-09-16 (+6d) | 2010-09-16 → 2010-09-22 (+6d) |  |  |  |  |
| 109 | Request Systems Team PROD Deployment Setup | 2010-09-17 → 2010-09-23 (+6d) | 2010-09-17 → 2010-09-23 (+6d) |  |  |  |  |
| 110 | Milestone: Deploy to PROD | 2010-09-17 → 2010-09-23 (+6d) | 2010-09-21 → 2010-09-27 (+6d) |  |  |  |  |
| 111 | Test on PROD | 2010-09-21 → 2010-09-27 (+6d) | 2010-09-23 → 2010-09-29 (+6d) |  |  |  |  |
| 112 | Milestone: Announce Availability to the Community | 2010-09-23 → 2010-09-29 (+6d) | 2010-09-24 → 2010-09-30 (+6d) |  |  |  |  |
| 113 | End caNanoLab 1.5.2 | 2010-09-24 → 2010-09-30 (+6d) | 2010-09-24 → 2010-09-30 (+6d) |  |  |  |  |

## Version 5 (saved 2010-10-13, file caNanoLab_1.5.2_Project_Plan.mpp)

Note of the change: SVN-Revision: 19467

Last finish stays 2010-09-30. Complete tasks 31 → 53.

Changed:

| ID | Task | Start | Finish | Complete | Total float |
| --- | --- | --- | --- | --- | --- |
| 1 | **caNanoLab 1.5.2** |  |  | 42% → 79% |  |
| 31 | **Elaboration** |  |  | 62% → 94% |  |
| 36 | **Iteration 1: Curation Account Mgmt** |  |  | 51% → 92% |  |
| 41 | **Implementation** |  | 2010-07-14 A | 90% → 100% | 45.12d → none |
| 44 | Implement Curation Account Mgmt |  | 2010-07-13 A | 95% → 100% | 45.12d → none |
| 45 | Milestone: Demonstrate Data Availability Matrix | 2010-07-14 A | 2010-07-14 A | 0% → 100% | 44.12d → none |
| 46 | **Testing** |  |  | 17% → 97% |  |
| 48 | Milestone: Deploy to QA | 2010-07-15 A | 2010-07-16 A | 0% → 100% | 44.12d → none |
| 49 | Test on QA | 2010-07-19 A | 2010-07-23 A | 0% → 100% | 44.12d → none |
| 50 | Resolve Defects | 2010-07-19 A | 2010-07-23 A | 0% → 100% | 47.12d → none |
| 51 | Re-Deploy/Test | 2010-07-26 A |  | 0% → 80% | 44.12d → 45.12d |
| 52 | **Iteration 2: Data Availability Matrix** |  |  | 40% → 92% | 0d → 24.04d |
| 57 | **Implementation** |  | 2010-07-19 A | 84% → 100% | 0d → none |
| 58 | Implement Data Availability Matrix |  | 2010-07-16 A | 95% → 100% | 0d → none |
| 59 | Milestone: Demonstrate Data Availability Matrix | 2010-07-16 A | 2010-07-19 A | 0% → 100% | 0d → none |
| 60 | **Testing** |  |  | 17% → 97% | 0d → 24.04d |
| 62 | Milestone: Deploy to QA | 2010-07-19 A | 2010-07-21 A | 0% → 100% | 0d → none |
| 63 | Test on QA | 2010-07-21 A | 2010-07-28 A | 0% → 100% | 0d → none |
| 64 | Resolve Defects | 2010-07-21 A | 2010-07-28 A | 0% → 100% | 3.5d → none |
| 65 | Re-Deploy/Test | 2010-07-28 A |  | 0% → 80% | 0d → 24.04d |
| 69 | **Construction** |  |  | 2% → 96% |  |
| 70 | **Project Management** |  | 2010-08-10 A | 90% → 100% | 18.5d → none |
| 71 | **Report Project Status** |  | 2010-08-10 A | 90% → 100% | 18.5d → none |
| 72 | Draft Monthly Status Report |  | 2010-08-10 A | 90% → 100% | 0d → none |
| 73 | Deliverable: Monthly Status Report |  | 2010-08-10 A | 90% → 100% | 18.5d → none |
| 74 | **Iteration 1: Defect Fixes/Enhancements** | 2010-08-02 A | 2010-08-16 A | 0% → 100% | 0d → none |
| 75 | Requirements | 2010-08-02 A | 2010-08-09 A | 0% → 100% | 5d → none |
| 76 | Analysis and Design | 2010-08-02 A | 2010-08-09 A | 0% → 100% | 5d → none |
| 77 | Implementation | 2010-08-02 A | 2010-08-16 A | 0% → 100% | 0d → none |
| 78 | **Environment** | 2010-08-04 A | 2010-08-24 A | 0% → 100% | 8.5d → none |
| 79 | Provision the QA server | 2010-08-04 A | 2010-08-10 A | 0% → 100% | 8.5d → none |
| 80 | Provision the STAGE server | 2010-08-11 A | 2010-08-17 A | 0% → 100% | 8.5d → none |
| 81 | Provision the PROD server | 2010-08-18 A | 2010-08-24 A | 0% → 100% | 8.5d → none |
| 83 | Test on QA | 2010-08-16 A | 2010-08-23 A | 0% → 100% | 0d → none |
| 84 | Sent Request for AppScan on QA | 2010-08-30 A | 2010-08-30 A | 0% → 100% | 4.5d → none |
| 85 | Re-Deploy/Resolve Defects | 2010-08-23 A |  | 0% → 80% |  |
| 86 | **Transition** | 2010-09-06 A |  | 0% → 14% |  |
| 87 | **Project Management** | 2010-09-10 A | 2010-09-10 A | 0% → 100% | 13.12d → none |
| 88 | **Report Project Status** | 2010-09-10 A | 2010-09-10 A | 0% → 100% | 13.12d → none |
| 89 | Draft Monthly Status Report | 2010-09-10 A | 2010-09-10 A | 0% → 100% | 13.12d → none |
| 90 | Deliverable: Monthly Status Report | 2010-09-10 A | 2010-09-10 A | 0% → 100% | 13.12d → none |
| 91 | **Requirements** | 2010-09-06 A |  | 0% → 95% |  |
| 92 | Finalize Use Case Specification | 2010-09-06 A |  | 0% → 95% | 12.62d → 0d |
| 93 | Deliverable: Use Case Specification | 2010-09-13 A |  | 0% → 95% |  |
| 94 | **Analysis and Design** | 2010-09-06 A |  | 0% → 10% |  |
| 95 | Finalize Design Specification | 2010-09-06 A |  | 0% → 10% | 2.62d → 0d |
| 96 | Deliverable: Design Specification | 2010-09-20 A |  | 0% → 10% |  |
